# Cronograma de Implementacion

Schedule from MS Project, 2008-12-02 to 2009-07-08, costs in $b, A marks actual dates.

## Calendars

- Estándar: Mon-Fri 09:00-13:00, 15:00-19:00; Sat-Sun off. Exceptions (off unless hours are given): 2008-12-01 to 2008-12-05 08:00-09:00, 2008-12-06 09:00-13:00, 2008-12-08 to 2008-12-12 08:00-09:00, 2008-12-13 09:00-13:00, 2008-12-15 to 2008-12-19 08:00-09:00, 2008-12-20 09:00-13:00, 2008-12-22 to 2008-12-27 20:00-23:00, 2008-12-29 to 2009-01-03 20:00-23:00, 2009-01-05 to 2009-01-10 20:00-23:00, 2009-01-12 to 2009-01-17 20:00-23:00, 2009-01-19 to 2009-01-24 20:00-23:00, 2009-01-26 to 2009-01-31 20:00-23:00, 2009-02-02 to 2009-02-07 20:00-23:00, 2009-02-09 to 2009-02-14 20:00-23:00, 2009-02-16 to 2009-02-21 20:00-23:00, 2009-02-23 to 2009-02-28 20:00-23:00, 2009-03-02 to 2009-03-07 20:00-23:00, 2009-03-09 to 2009-03-14 20:00-23:00, 2009-03-16 to 2009-03-21 20:00-23:00, 2009-03-23 to 2009-03-28 20:00-23:00, 2009-03-30 to 2009-04-04 20:00-23:00, 2009-04-06 to 2009-04-11 20:00-23:00, 2009-04-13 to 2009-04-18 20:00-23:00, 2009-04-20 to 2009-04-25 20:00-23:00, 2009-04-27 to 2009-05-02 20:00-23:00, 2009-05-04 to 2009-05-09 20:00-23:00, 2009-05-11 to 2009-05-16 20:00-23:00, 2009-05-18 to 2009-05-23 20:00-23:00, 2009-05-25 to 2009-05-30 20:00-23:00, 2009-06-01 to 2009-06-06 20:00-23:00, 2009-06-08 to 2009-06-13 20:00-23:00, 2009-06-15 to 2009-06-20 20:00-23:00, 2009-06-22 to 2009-06-27 20:00-23:00, 2009-06-29 to 2009-07-04 20:00-23:00, 2009-07-06 to 2009-07-11 20:00-23:00.

## Resources

| Resource | Rate |
| --- | --- |
| Sergio Moreno | 100 |
| Servidor |  |
| Licencias Microsoft |  |

## Schedule

| ID | WBS | Task | Duration | Start | Finish | Predecessors | Complete | Remaining | Baseline start | Baseline finish | Baseline duration | Total slack | Free slack | Resources | Work | Actual work | Cost | Actual cost |
| --- | --- | --- | --- | --- | --- | --- | --- | --- | --- | --- | --- | --- | --- | --- | --- | --- | --- | --- |
| 1 | 1 | **DATAWAREHOUSE MENDOCINA-PEDIDOS** | 18.88d | 2008-12-02 A | 2009-02-07 |  | 21% | 14.89d |  |  |  | 48.38d |  |  | 221h | 63.8h | 22,100 | 6,380 |
| 2 | 1.1 | **Diseño de la Extraccion de Datos** | 3d | 2008-12-02 A | 2008-12-20 |  | 80% | 0.6d | 2008-12-02 | 2008-12-20 | 3d | 64.25d |  | Sergio Moreno | 48h | 38.4h | 4,800 | 3,840 |
| 3 | 1.1.1 | Configuracion inicial ambiente de desarrollo | 4h | 2008-12-02 A | 2008-12-05 A |  | 100% |  | 2008-12-02 | 2008-12-05 | 4h |  |  | Sergio Moreno | 4h | 4h | 400 | 400 |
| 4 | 1.1.2 | Maestro de Artículos | 1h | 2008-12-06 A | 2008-12-06 A | 3 | 100% |  | 2008-12-06 | 2008-12-06 | 1h |  |  | Sergio Moreno | 1h | 1h | 100 | 100 |
| 5 | 1.1.3 | Maestro de Distribuidores | 1h | 2008-12-06 A | 2008-12-06 A | 4 | 100% |  | 2008-12-06 | 2008-12-06 | 1h |  |  | Sergio Moreno | 1h | 1h | 100 | 100 |
| 6 | 1.1.4 | Maestro de Vendedores | 1h | 2008-12-06 A | 2008-12-06 A | 5 | 100% |  | 2008-12-06 | 2008-12-06 | 1h |  |  | Sergio Moreno | 1h | 1h | 100 | 100 |
| 7 | 1.1.5 | Maestro de Sabores | 1h | 2008-12-06 A | 2008-12-06 A | 6 | 100% |  | 2008-12-06 | 2008-12-06 | 1h |  |  | Sergio Moreno | 1h | 1h | 100 | 100 |
| 8 | 1.1.6 | Maestro de Líneas | 1h | 2008-12-08 A | 2008-12-08 A | 7 | 100% |  | 2008-12-08 | 2008-12-08 | 1h |  |  | Sergio Moreno | 1h | 1h | 100 | 100 |
| 9 | 1.1.7 | Maestro de Distritos | 1h | 2008-12-09 A | 2008-12-09 A | 8 | 100% |  | 2008-12-09 | 2008-12-09 | 1h |  |  | Sergio Moreno | 1h | 1h | 100 | 100 |
| 10 | 1.1.8 | Maestro de Rutas | 1h | 2008-12-10 A | 2008-12-10 A | 9 | 100% |  | 2008-12-10 | 2008-12-10 | 1h |  |  | Sergio Moreno | 1h | 1h | 100 | 100 |
| 11 | 1.1.9 | Maestro de Sectores | 1h | 2008-12-11 A | 2008-12-11 A | 10 | 100% |  | 2008-12-11 | 2008-12-11 | 1h |  |  | Sergio Moreno | 1h | 1h | 100 | 100 |
| 12 | 1.1.10 | Maestro de Clientes | 1h | 2008-12-12 A | 2008-12-12 A | 11 | 100% |  | 2008-12-12 | 2008-12-12 | 1h |  |  | Sergio Moreno | 1h | 1h | 100 | 100 |
| 13 | 1.1.11 | Maestro Clientes - Precios | 1h | 2008-12-13 A | 2008-12-13 A | 12 | 100% |  | 2008-12-13 | 2008-12-13 | 1h |  |  | Sergio Moreno | 1h | 1h | 100 | 100 |
| 14 | 1.1.12 | Transaccional de Pedidos | 4h | 2008-12-13 A | 2008-12-15 A | 13 | 100% |  | 2008-12-13 | 2008-12-15 | 4h |  |  | Sergio Moreno | 4h | 4h | 400 | 400 |
| 15 | 1.1.13 | Validacion de la informacion (congruencia) | 6h | 2008-12-16 A | 2008-12-20 | 14 | 20% | 4.8h | 2008-12-16 | 2008-12-20 | 6h | 64.25d |  | Sergio Moreno | 6h | 1.2h | 600 | 120 |
| 16 | 1.2 | **Diseño de la Transformacion de Datos** | 2.75d | 2008-12-20 A | 2008-12-29 |  | 58% | 1.16d | 2008-12-20 | 2008-12-29 | 2.75d | 48.38d | 0d | Sergio Moreno | 44h | 25.4h | 4,400 | 2,540 |
| 17 | 1.2.1 | Dimension de Fecha | 3h | 2008-12-20 A | 2008-12-22 A | 2 | 100% |  | 2008-12-20 | 2008-12-22 | 3h |  |  | Sergio Moreno | 3h | 3h | 300 | 300 |
| 18 | 1.2.2 | Dimension de Clientes | 6h | 2008-12-22 A | 2008-12-24 | 17 | 95% | 0.3h | 2008-12-22 | 2008-12-24 | 6h | 50d |  | Sergio Moreno | 6h | 5.7h | 600 | 570 |
| 19 | 1.2.3 | Dimension Distrito Ruta Sector | 2h | 2008-12-24 A | 2008-12-24 A | 18 | 100% |  | 2008-12-24 | 2008-12-24 | 2h |  |  | Sergio Moreno | 2h | 2h | 200 | 200 |
| 20 | 1.2.4 | Dimension Linea Sabor Articulo | 2h | 2008-12-25 A | 2008-12-25 A | 19 | 100% |  | 2008-12-25 | 2008-12-25 | 2h |  |  | Sergio Moreno | 2h | 2h | 200 | 200 |
| 21 | 1.2.5 | Dimension Distribuidor | 1h | 2008-12-25 | 2008-12-25 | 20 |  |  | 2008-12-25 | 2008-12-25 | 1h | 48.38d | 0d | Sergio Moreno | 1h |  | 100 |  |
| 22 | 1.2.6 | Dimensiorn Estado de pedido | 1h | 2008-12-26 | 2008-12-26 | 21 |  |  | 2008-12-26 | 2008-12-26 | 1h | 48.38d | 0d | Sergio Moreno | 1h |  | 100 |  |
| 23 | 1.2.7 | Dimension Jefe Supervisor Vendedor | 2h | 2008-12-26 | 2008-12-26 | 22 |  |  | 2008-12-26 | 2008-12-26 | 2h | 48.38d | 0d | Sergio Moreno | 2h |  | 200 |  |
| 24 | 1.2.8 | Tabla de Hechos: Pedidos | 5h | 2008-12-27 | 2008-12-29 | 23 |  |  | 2008-12-27 | 2008-12-29 | 5h | 48.38d |  | Sergio Moreno | 5h |  | 500 |  |

| ID | WBS | Task | Duration | Start | Finish | Predecessors | Baseline start | Baseline finish | Baseline duration | Total slack | Free slack | Constraint | Resources | Work | Cost |
| --- | --- | --- | --- | --- | --- | --- | --- | --- | --- | --- | --- | --- | --- | --- | --- |
| 25 | 1.3 | **Diseño del cargado de datos** | 1.25d | 2008-12-29 | 2009-01-01 |  | 2008-12-29 | 2009-01-01 | 1.25d | 48.38d |  |  | Sergio Moreno | 20h | 2,000 |
| 26 | 1.3.1 | Cubo: PEDIDOS | 5h | 2008-12-29 | 2008-12-31 | 16 | 2008-12-29 | 2008-12-31 | 5h | 48.38d | 0d |  | Sergio Moreno | 5h | 500 |
| 27 | 1.3.2 | Medida Cantidad de Pedidos | 1h | 2008-12-31 | 2008-12-31 | 26 | 2008-12-31 | 2008-12-31 | 1h | 48.38d | 0d |  | Sergio Moreno | 1h | 100 |
| 28 | 1.3.3 | Medida Cantidad de clientes | 2h | 2008-12-31 | 2009-01-01 | 27 | 2008-12-31 | 2009-01-01 | 2h | 48.38d | 0d |  | Sergio Moreno | 2h | 200 |
| 29 | 1.3.4 | Medida Monto de los pedidos | 2h | 2009-01-01 | 2009-01-01 | 28 | 2009-01-01 | 2009-01-01 | 2h | 48.38d | 0d |  | Sergio Moreno | 2h | 200 |
| 30 | 1.4 | **Diseño de Informes en excel** | 0.25d | 2009-01-02 | 2009-01-02 |  | 2009-01-02 | 2009-01-02 | 0.25d | 48.38d |  |  | Sergio Moreno | 4h | 400 |
| 31 | 1.4.1 | Layout de ejemplo | 2h | 2009-01-02 | 2009-01-02 | 29 | 2009-01-02 | 2009-01-02 | 2h | 48.38d | 0d |  | Sergio Moreno | 2h | 200 |
| 32 | 1.5 | **Creacion de reportes adicionales en Reporting Services** | 1.5d | 2009-01-02 | 2009-01-07 |  | 2009-01-02 | 2009-01-07 | 1.5d | 48.38d |  |  | Sergio Moreno | 24h | 2,400 |
| 33 | 1.5.1 | Informe Clientes por fecha | 4h | 2009-01-02 | 2009-01-03 | 31 | 2009-01-02 | 2009-01-03 | 4h | 48.38d | 0d |  | Sergio Moreno | 4h | 400 |
| 34 | 1.5.2 | Informe a medida 2 | 4h | 2009-01-05 | 2009-01-06 | 33 | 2009-01-05 | 2009-01-06 | 4h | 48.38d | 0d |  | Sergio Moreno | 4h | 400 |
| 35 | 1.5.3 | Informe a medida 3 | 4h | 2009-01-06 | 2009-01-07 | 34 | 2009-01-06 | 2009-01-07 | 4h | 48.38d | 0d |  | Sergio Moreno | 4h | 400 |
| 36 | 1.6 | Instalacion y configuracion del nuevo servidor | 8h | 2009-01-07 | 2009-01-10 | 35 | 2009-01-07 | 2009-01-10 | 8h | 48.38d | 0d |  | Sergio Moreno | 8h | 800 |
| 37 | 1.7 | Preparacion de Manual y Presentacion a los usuarios | 12h | 2009-01-10 | 2009-01-15 | 36 | 2009-01-10 | 2009-01-15 | 12h | 48.38d | 0d |  | Sergio Moreno | 12h | 1,200 |
| 38 | 1.8 | Presentacion y entrega de las capacidades de la nueva herramienta | 1h | 2009-01-15 | 2009-01-15 | 37 | 2009-01-15 | 2009-01-15 | 1h | 48.38d | 0d |  | Sergio Moreno | 1h | 100 |
| 39 | 1.9 | Requerimientos / Correcciones adicionales | 24h | 2009-01-15 | 2009-01-24 | 38 | 2009-01-15 | 2009-01-24 | 24h | 48.38d | 0d |  | Sergio Moreno | 24h | 2,400 |
| 40 | 1.10 | Capacitacion a usuarios finales para explotacion usando Excel 2007 | 24h | 2009-01-24 | 2009-02-03 | 39 | 2009-01-24 | 2009-02-03 | 24h | 48.38d | 0d |  | Sergio Moreno | 24h | 2,400 |
| 41 | 1.11 | Capacitacion a sistemas para mantenimiento de los flujos | 12h | 2009-02-03 | 2009-02-07 | 40 | 2009-02-03 | 2009-02-07 | 12h | 48.38d |  |  | Sergio Moreno | 12h | 1,200 |
| 42 | 2 | **DATAWAREHOUSE MENDOCINA - LIQUIDACION** | 1d? | 2009-07-06 | 2009-07-08 |  |  |  |  | 0d |  |  |  |  |  |
| 43 | 2.1 | Analisis de la necesidad y disponibilidad de informacion | 1d? | 2009-07-06 | 2009-07-08 |  |  |  |  | 0d |  | start no earlier than 2009-07-06 |  |  |  |
| 44 | 2.2 | **extraccion de datos** | 1d? | 2009-07-06 | 2009-07-08 |  |  |  |  | 0d |  |  |  |  |  |
| 45 | 2.2.1 | Extraccion de Camiones | 1d? | 2009-07-06 | 2009-07-08 |  |  |  |  | 0d |  | start no earlier than 2009-07-06 |  |  |  |
| 46 | 2.2.2 | Extraccion de Distribuidores | 1d? | 2009-07-06 | 2009-07-08 |  |  |  |  | 0d |  | start no earlier than 2009-07-06 |  |  |  |
| 47 | 2.2.3 | Extraccion de Distritos (MDV123) | 1d? | 2009-07-06 | 2009-07-08 |  |  |  |  | 0d |  | start no earlier than 2009-07-06 |  |  |  |
| 48 | 2.2.4 | Extraccion de Cabecera de liquidaciones | 1d? | 2009-07-06 | 2009-07-08 |  |  |  |  | 0d |  | start no earlier than 2009-07-06 |  |  |  |
| 49 | 2.2.5 | Extraccion de detalle de liquidaciones | 1d? | 2009-07-06 | 2009-07-08 |  |  |  |  | 0d |  | start no earlier than 2009-07-06 |  |  |  |
| 50 | 2.2.6 | Extraccion de fletes de distribuidor | 1d? | 2009-07-06 | 2009-07-08 |  |  |  |  | 0d |  | start no earlier than 2009-07-06 |  |  |  |
| 51 | 2.2.7 | Extraccion de tipos de documento | 1d? | 2009-07-06 | 2009-07-08 |  |  |  |  | 0d |  | start no earlier than 2009-07-06 |  |  |  |
| 52 | 2.2.8 | Extraccion de cabecera de movimientos de bodega | 1d? | 2009-07-06 | 2009-07-08 |  |  |  |  | 0d |  | start no earlier than 2009-07-06 |  |  |  |
| 53 | 2.2.9 | Extraccion de detalle de movimientos de bodega | 1d? | 2009-07-06 | 2009-07-08 |  |  |  |  | 0d |  | start no earlier than 2009-07-06 |  |  |  |
| 54 | 2.2.10 | Extraccion de dias habiles | 1d? | 2009-07-06 | 2009-07-08 |  |  |  |  | 0d |  | start no earlier than 2009-07-06 |  |  |  |
| 55 | 2.2.11 | Extraccion de cabecera de facturaas | 1d? | 2009-07-06 | 2009-07-08 |  |  |  |  | 0d |  | start no earlier than 2009-07-06 |  |  |  |
| 56 | 2.2.12 | Extraccion de detalle de facturas | 1d? | 2009-07-06 | 2009-07-08 |  |  |  |  | 0d |  | start no earlier than 2009-07-06 |  |  |  |

| ID | WBS | Task | Duration | Start | Finish | Total slack | Constraint |
| --- | --- | --- | --- | --- | --- | --- | --- |
| 57 | 2.3 | **transformacion de datos** | 1d? | 2009-07-06 | 2009-07-08 | 0d |  |
| 58 | 2.3.1 | Dimension de Distribuidores | 1d? | 2009-07-06 | 2009-07-08 | 0d | start no earlier than 2009-07-06 |
| 59 | 2.3.2 | Dimension de Camiones | 1d? | 2009-07-06 | 2009-07-08 | 0d | start no earlier than 2009-07-06 |
| 60 | 2.3.3 | Dimension de tipos de documentos | 1d? | 2009-07-06 | 2009-07-08 | 0d | start no earlier than 2009-07-06 |
| 61 | 2.3.4 | Dimension de Bodegas | 1d? | 2009-07-06 | 2009-07-08 | 0d | start no earlier than 2009-07-06 |
| 62 | 2.3.5 | Dimension Fecha - Dias Habiles (adaptacion) | 1d? | 2009-07-06 | 2009-07-08 | 0d | start no earlier than 2009-07-06 |
| 63 | 2.3.6 | Dimension Distrito - Ruta (Adaptacion) | 1d? | 2009-07-06 | 2009-07-08 | 0d | start no earlier than 2009-07-06 |
| 64 | 2.3.7 | Tabla de hechos de Liquidacion | 1d? | 2009-07-06 | 2009-07-08 | 0d | start no earlier than 2009-07-06 |
| 65 | 2.3.8 | Tabla de Hechos de Facturacion | 1d? | 2009-07-06 | 2009-07-08 | 0d | start no earlier than 2009-07-06 |
| 66 | 2.3.9 | Tabla de hechos de movimientos de bodega | 1d? | 2009-07-06 | 2009-07-08 | 0d | start no earlier than 2009-07-06 |
| 67 | 2.3.10 | Tabla de hechos de fletes de distribuidor | 1d? | 2009-07-06 | 2009-07-08 | 0d | start no earlier than 2009-07-06 |
| 68 | 2.4 | **Cargado de Datos** | 1d? | 2009-07-06 | 2009-07-08 | 0d |  |
| 69 | 2.4.1 | Cubo Liquidacion | 1d? | 2009-07-06 | 2009-07-08 | 0d | start no earlier than 2009-07-06 |
| 70 | 2.4.2 | Cubo Movimientos de Bodega | 1d? | 2009-07-06 | 2009-07-08 | 0d | start no earlier than 2009-07-06 |
| 71 | 2.4.3 | Cubo Fletes de distribuidor | 1d? | 2009-07-06 | 2009-07-08 | 0d | start no earlier than 2009-07-06 |
| 72 | 2.4.4 | Cubo de Facturacion | 1d? | 2009-07-06 | 2009-07-08 | 0d | start no earlier than 2009-07-06 |
| 73 | 2.5 | Preparacion de manual | 1d? | 2009-07-06 | 2009-07-08 | 0d | start no earlier than 2009-07-06 |
| 74 | 2.6 | Presentacion a los usuarios | 1d? | 2009-07-06 | 2009-07-08 | 0d | start no earlier than 2009-07-06 |
| 75 | 2.7 | Requerimientos - Correcciones adicionales | 1d? | 2009-07-06 | 2009-07-08 | 0d | start no earlier than 2009-07-06 |
| 76 | 2.8 | Capacitacion a usuarios finales | 1d? | 2009-07-06 | 2009-07-08 | 0d | start no earlier than 2009-07-06 |
| 77 | 2.9 | Capacitacion a Sistemas para mantenimiento | 1d? | 2009-07-06 | 2009-07-08 | 0d | start no earlier than 2009-07-06 |
